# Autonomous Go-Kart

How a schedule from Planner changed from version to version. A marks actual dates.

## Version 1 (saved 2011-04-15)

Note of the change: lajdlhjkfdsg klhj zsdfg,nmjfdgz

| ID | WBS | Task | Duration | Start | Finish | Predecessors | Complete | Constraint |
| --- | --- | --- | --- | --- | --- | --- | --- | --- |
| 1 | 1 | **Autonomous Go-Kart** |  | 2011-04-04 | 2011-08-11 |  |  |  |
| 2 |  | Assessment: Specification Report | 0d | 2011-05-09 | 2011-05-09 |  |  | must start on 2011-05-09 |
| 3 | 1.2 | **Design phase** |  | 2011-04-04 | 2011-06-07 |  |  |  |
| 4 |  | System Diagrams |  | 2011-04-04 | 2011-05-08 |  |  |  |
| 5 |  | Parts List |  | 2011-05-09 | 2011-06-02 | 4 |  |  |
| 6 |  | Servo Selection |  | 2011-04-04 | 2011-04-18 |  |  |  |
| 7 |  | Servo Mount Design |  | 2011-04-19 | 2011-05-03 | 6 |  |  |
| 8 |  | Costing |  | 2011-06-03 | 2011-06-07 | 7, 6, 5 |  |  |
| 9 | 1.3 | **Autonomous Hardware** |  | 2011-04-04 | 2011-04-18 |  | 9% |  |
| 10 |  | Sensors |  | 2011-04-04 | 2011-04-18 |  |  |  |
| 11 |  | Control interface |  | 2011-04-04 | 2011-04-18 |  |  |  |
| 12 | 1.4 | **Build Hardware** |  | 2011-06-22 | 2011-07-03 | 3 |  |  |
| 13 |  | Mechanical Hardware |  | 2011-06-22 | 2011-07-01 | 15 |  |  |
| 14 |  | Electronics Hardware |  | 2011-06-29 | 2011-07-03 | 16 |  |  |
| 15 |  | Order Servos |  | 2011-06-08 | 2011-06-21 | 8 |  |  |
| 16 |  | Order Electronics |  | 2011-06-08 | 2011-06-28 | 8 |  |  |
| 17 | 1.7 | **Software Devel** |  | 2011-04-19 | 2011-06-02 | 9 |  |  |
| 18 |  | Automation Software |  | 2011-04-19 | 2011-06-02 |  |  |  |
| 19 |  | Control Software |  | 2011-04-19 | 2011-05-09 |  |  |  |
| 20 |  | Deadline for new jobs in the workshop | 0d | 2011-08-12 | 2011-08-12 |  |  | must start on 2011-08-12 |

## Version 2 (saved 2011-05-08)

Note of the change: Wrote stuff.

Last finish stays 2011-08-12. Complete tasks 0 → 3.

Changed:

| ID | Task | Complete |
| --- | --- | --- |
| 4 | System Diagrams | 0% → 100% |
| 5 | Parts List | 0% → 90% |
| 6 | Servo Selection | 0% → 100% |
| 7 | Servo Mount Design | 0% → 10% |
| 8 | Costing | 0% → 90% |
| 12 | Order Electronics | 0% → 10% |
| 13 | Order Servos | 0% → 100% |

## Version 3 (saved 2011-05-09)

Note of the change: Updated the gant chart

Last finish 2011-08-12 → 2011-09-09 (+28d).

Added:

| ID | Task | Start | Finish | Predecessors | Resources |
| --- | --- | --- | --- | --- | --- |
| 1 | Project Setup | 2011-04-04 | 2011-04-10 |  |  |
| 6 | Schematic Design | 2011-04-29 | 2011-05-05 | 5 | Wim; Henry |
| 7 | PCB Design | 2011-05-06 | 2011-05-20 | 6 | Wim [50%]; Simon [20%]; Zac [20%]; Henry [50%] |
| 10 | Servo Circuit Schematics | 2011-04-28 | 2011-05-05 | 9 | Simon; Zac |
| 17 | Build Servo Brackets | 2011-06-15 | 2011-06-26 |  | Simon; Zac |
| 18 | **Electronics Hardware** | 2011-06-15 | 2011-06-22 | 13 |  |
| 19 | Populate compoents | 2011-06-15 | 2011-06-22 |  | Wim; Henry |

Removed: 15 Mechanical Hardware

Changed:

| ID | Task | Start | Finish | Duration | Complete | Predecessors | Other |
| --- | --- | --- | --- | --- | --- | --- | --- |
| 2 | **Autonomous Go-Kart** | 2011-04-04 → 2011-04-11 (+7d) | 2011-08-11 → 2011-09-09 (+29d) |  |  | none → 1 |  |
| 3 | Assessment: Specification Report |  |  |  |  |  | resources none → Wim; Simon [10%]; Zac [10%]; Henry [10%] |
| 4 | **Design phase** | 2011-04-04 → 2011-04-11 (+7d) | 2011-06-07 → 2011-05-25 (-13d) |  |  |  |  |
| 5 | System Diagrams | 2011-04-04 → 2011-04-11 (+7d) | 2011-05-08 → 2011-04-28 (-10d) |  |  |  | resources none → Wim; Henry |
| 8 | Parts List | 2011-05-09 → 2011-04-29 (-10d) | 2011-06-02 → 2011-05-18 (-15d) |  | 90% → 50% |  | resources none → Wim; Simon [10%]; Zac [10%]; Henry [10%] |
| 9 | Servo Selection | 2011-04-04 → 2011-04-11 (+7d) | 2011-04-18 → 2011-04-28 (+10d) |  |  |  | resources none → Simon; Zac |
| 11 | Servo Mount Design | 2011-04-19 → 2011-04-28 (+9d) | 2011-05-03 → 2011-05-07 (+4d) |  |  |  | resources none → Simon; Zac [50%] |
| 12 | Costing | 2011-06-03 → 2011-05-18 (-16d) | 2011-06-07 → 2011-05-25 (-13d) |  |  |  | resources none → Wim [10%]; Simon [10%]; Zac [10%]; Henry [10%] |
| 13 | Order Electronics | 2011-06-08 → 2011-05-25 (-14d) | 2011-06-28 → 2011-06-15 (-13d) | none → 7.88d | 10% → 0% | 12 → 12, 7 | resources none → Wim [50%]; Henry [50%] |
| 14 | Order Servos | 2011-06-08 → 2011-05-25 (-14d) | 2011-06-21 → 2011-06-15 (-6d) | none → 7.88d | 100% → 0% |  | resources none → Simon [50%]; Zac [50%] |
| 15 | **Build Hardware** | 2011-06-22 → 2011-06-15 (-7d) | 2011-07-03 → 2011-06-26 (-7d) |  |  |  |  |
| 16 | **Mechanical Hardware** | 2011-06-29 → 2011-06-15 (-14d) | 2011-07-03 → 2011-06-26 (-7d) |  |  | 13 → 14 | was named Electronics Hardware |
| 20 | **Autonomous Hardware** | 2011-04-04 → 2011-06-26 (+83d) | 2011-04-18 → 2011-07-26 (+99d) |  | 9% → 0% | none → 15 | resources none → Wim; Simon; Zac; Henry |
| 21 | Sensors | 2011-04-04 → 2011-06-26 (+83d) | 2011-04-18 → 2011-07-26 (+99d) |  |  |  |  |
| 22 | Control interface | 2011-04-04 → 2011-06-26 (+83d) | 2011-04-18 → 2011-07-26 (+99d) |  |  |  |  |
| 23 | **Software Devel** | 2011-04-19 → 2011-07-26 (+98d) | 2011-06-02 → 2011-09-09 (+99d) |  |  | 20 → 20, 18 |  |
| 24 | Automation Software | 2011-04-19 → 2011-07-26 (+98d) | 2011-06-02 → 2011-09-09 (+99d) |  |  |  | resources none → Wim [25%]; Simon [25%]; Zac [25%]; Henry [25%] |
| 25 | Control Software | 2011-04-19 → 2011-07-26 (+98d) | 2011-05-09 → 2011-09-09 (+123d) |  |  |  | resources none → Wim [25%]; Simon [25%]; Zac [25%]; Henry [25%] |
